# AVOINE Proyect

Schedule from MS Project, 2018-02-01 to 2018-04-07, costs in XDR.

## Calendars

- Estándar: Mon-Sat 08:00-14:00, 16:00-23:00; Sun off. Exceptions (off unless hours are given): 2018-03-26 to 2018-03-31 (Semana Santa).

## Resources

| Resource | Unit | Rate |
| --- | --- | --- |
| Manuel Velázquez Martínez |  | 120 |
| Laura Patricia Rangel Mora |  | 120 |
| Jose Alfredo Armenta Blanco |  | 120 |
| Andres Moreno Garcia |  | 120 |
| Hojas | Unidad | 0.5 |
| Lapicero | Unidad | 4 |
| Laptop |  | 5 |
| Agua |  |  |
| Electricidad |  |  |
| Internet |  |  |
| Mouse | Unidad | 65 |
| Memorias | Unidad | 80 |

## Schedule

| ID | WBS | Task | Type | Duration | Start | Finish | Predecessors | Total slack | Free slack | Constraint | Resources | Work | Cost |
| --- | --- | --- | --- | --- | --- | --- | --- | --- | --- | --- | --- | --- | --- |
| 1 | 1 | **AVOINE** |  | 82.25d | 2018-02-01 09:00 | 2018-04-07 19:00 |  | 0d |  |  | Memorias [4 Unidad]; Agua; Electricidad; Internet; Mouse [1 Unidad] | 2758h | 94,492 |
| 2 | 1.1 | Inicio | milestone | 0d | 2018-02-01 10:00 | 2018-02-01 10:00 | 4 | 83.88d |  |  |  |  |  |
| 3 | 1.2 | **Planeación** |  | 9.12d | 2018-02-01 09:00 | 2018-02-07 19:00 |  | 20.75d | 0.62d |  |  | 242h | 29,061 |
| 4 | 1.2.1 | Minuta de reunion de lanzamiento |  | 1h | 2018-02-01 09:00 | 2018-02-01 10:00 |  | 15.88d | 0d | start no earlier than 2018-02-01 09:00 | Jose Alfredo Armenta Blanco | 1h | 120 |
| 5 | 1.2.2 | Ciclo de vida |  | 1h | 2018-02-01 10:00 | 2018-02-01 11:00 | 4 | 15.88d | 1.38d | start no earlier than 2018-02-01 09:00 | Manuel Velázquez Martínez | 1h | 120 |
| 6 | 1.2.3 | Plan del proyecto |  | 60h | 2018-02-02 09:00 | 2018-02-07 19:00 | 5 | 20.75d | 0d | finish no earlier than 2018-02-07 19:00 | Laura Patricia Rangel Mora; Manuel Velázquez Martínez; Andres Moreno Garcia; Jose Alfredo Armenta Blanco; Hojas [10 Unidad]; Lapicero [4 Unidad] | 240h | 28,821 |
| 7 | 1.3 | Documento de Minuta de reunion de lanzamiento, Documento del plan del proyecto | milestone | 0d | 2018-02-07 19:00 | 2018-02-07 19:00 | 6 | 74.88d |  |  |  |  |  |
| 8 | 1.4 | **Análisis** |  | 12.62d | 2018-02-08 09:00 | 2018-02-16 21:00 | 3 | 17.38d | 2d |  |  | 79h | 9,480 |
| 9 | 1.4.1 | **Gestión de requerimientos** |  | 4.38d | 2018-02-08 09:00 | 2018-02-10 20:00 |  | 20.12d |  |  |  | 35h | 4,200 |
| 10 | 1.4.1.1 | Elicitación |  | 1h | 2018-02-08 09:00 | 2018-02-08 10:00 | 6 | 20.12d | 0d | start no earlier than 2018-02-08 09:00 | Jose Alfredo Armenta Blanco | 1h | 120 |
| 11 | 1.4.1.2 | Evaluar a los proveedores de requerimientos ha entrevistar |  | 1h | 2018-02-08 10:00 | 2018-02-08 11:00 | 10 | 13.88d | 0d | start no earlier than 2018-02-06 09:00 | Manuel Velázquez Martínez | 1h | 120 |
| 12 | 1.4.1.3 | Definir la estrategia de recolección de requerimientos |  | 1h | 2018-02-08 11:00 | 2018-02-08 12:00 | 11 | 13.88d | 0d | start no earlier than 2018-02-06 09:00 | Manuel Velázquez Martínez | 1h | 120 |
| 13 | 1.4.1.4 | Identificar los procesos del sistema |  | 8h | 2018-02-08 12:00 | 2018-02-08 22:00 | 12 | 13.88d | 0d | start no earlier than 2018-02-07 09:00 | Andres Moreno Garcia | 8h | 960 |
| 14 | 1.4.1.5 | Identificar requerimientos funcionales |  | 12h | 2018-02-08 22:00 | 2018-02-09 21:00 | 13 | 13.88d | 0d | start no earlier than 2018-02-08 09:00 | Laura Patricia Rangel Mora | 12h | 1,440 |
| 15 | 1.4.1.6 | Identificar requerimientos no funcionales |  | 12h | 2018-02-09 21:00 | 2018-02-10 20:00 | 14 | 13.88d | 0.5d | start no earlier than 2018-02-09 09:00 | Laura Patricia Rangel Mora | 12h | 1,440 |
| 16 | 1.4.2 | **Gestión** |  | 7.75d | 2018-02-12 09:00 | 2018-02-16 21:00 |  | 17.38d |  |  |  | 44h | 5,280 |
| 17 | 1.4.2.1 | Priorizar los requerimientos |  | 4h | 2018-02-12 09:00 | 2018-02-12 13:00 | 15 | 19.62d | 1.12d | start no earlier than 2018-02-12 09:00 | Laura Patricia Rangel Mora | 4h | 480 |
| 18 | 1.4.2.2 | Asignar al grupo de desarrollo de los requerimientos del software |  | 4h | 2018-02-13 09:00 | 2018-02-13 13:00 | 17 | 18.5d | 1.12d | start no earlier than 2018-02-13 09:00 | Jose Alfredo Armenta Blanco | 4h | 480 |
| 19 | 1.4.2.3 | Administrar los cambios en los requerimientos |  | 18h | 2018-02-14 09:00 | 2018-02-15 14:00 | 18 | 17.38d | 0d | start no earlier than 2018-02-14 09:00 | Laura Patricia Rangel Mora | 18h | 2,160 |
| 20 | 1.4.2.4 | Administrar la tranzabilidad de los requerimientos |  | 18h | 2018-02-15 16:00 | 2018-02-16 21:00 | 19 | 17.38d | 0d | start no earlier than 2018-02-15 09:00 | Laura Patricia Rangel Mora | 18h | 2,160 |
| 21 | 1.5 | Documento con la gestion de los requerimientos, Documento con la estrategia de recolección de requerimientos. | milestone | 0d | 2018-02-16 21:00 | 2018-02-16 21:00 | 20 | 61.62d |  |  |  |  |  |
| 22 | 1.6 | **Diseño** |  | 33d | 2018-02-19 09:00 | 2018-03-14 13:00 | 8 | 6.25d | 0d |  |  | 191h | 22,920 |
| 23 | 1.6.1 | **Diagramas UML** |  | 12d | 2018-02-19 09:00 | 2018-02-27 14:00 |  | 10.12d |  |  |  | 54h | 6,480 |
| 24 | 1.6.1.1 | Casos de uso |  | 18h | 2018-02-19 09:00 | 2018-02-20 14:00 | 20 | 15.38d | 2.62d | start no earlier than 2018-02-19 09:00 | Laura Patricia Rangel Mora | 18h | 2,160 |
| 25 | 1.6.1.2 | Diagramas de secuencia |  | 18h | 2018-02-22 09:00 | 2018-02-23 14:00 | 24 | 12.75d | 2.62d | start no earlier than 2018-02-22 09:00 | Laura Patricia Rangel Mora | 18h | 2,160 |
| 26 | 1.6.1.3 | Diagramas de clase |  | 18h | 2018-02-26 09:00 | 2018-02-27 14:00 | 25 | 10.12d | 2.62d | start no earlier than 2018-02-26 09:00 | Laura Patricia Rangel Mora | 18h | 2,160 |
| 27 | 1.6.2 | Diagrama E-R |  | 12h | 2018-03-01 09:00 | 2018-03-01 23:00 | 26 | 7.5d | 0.12d | start no earlier than 2018-03-01 09:00 | Laura Patricia Rangel Mora | 12h | 1,440 |
| 28 | 1.6.3 | Diagrama relacional |  | 10h | 2018-03-02 09:00 | 2018-03-02 21:00 | 27 | 7.38d | 0d | start no earlier than 2018-03-02 09:00 | Laura Patricia Rangel Mora | 10h | 1,200 |
| 29 | 1.6.4 | Maquetación |  | 20h | 2018-03-02 21:00 | 2018-03-05 13:00 | 28 | 1.12d |  | start no earlier than 2018-02-03 09:00 | Jose Alfredo Armenta Blanco | 20h | 2,400 |
| 30 | 1.6.5 | Mapa de navegación |  | 21h | 2018-03-06 09:00 | 2018-03-07 19:00 | 29 | 6.25d | 0d | finish no earlier than 2018-03-07 19:00 | Jose Alfredo Armenta Blanco | 21h | 2,520 |
| 31 | 1.6.6 | Definición de arquitectura |  | 20h | 2018-03-07 19:00 | 2018-03-09 11:00 | 30 | 6.25d | 0d |  | Jose Alfredo Armenta Blanco | 20h | 2,400 |
| 32 | 1.6.7 | Logo |  | 18h | 2018-03-09 11:00 | 2018-03-10 18:00 | 31 | 6.25d | 0d |  | Andres Moreno Garcia | 18h | 2,160 |
| 33 | 1.6.8 | Banner del sitio web |  | 18h | 2018-03-10 18:00 | 2018-03-12 23:00 | 32 | 6.25d | 0d |  | Manuel Velázquez Martínez | 18h | 2,160 |
| 34 | 1.6.9 | Animaciones |  | 18h | 2018-03-13 08:00 | 2018-03-14 13:00 | 33 | 6.25d | 0d |  | Manuel Velázquez Martínez | 18h | 2,160 |
| 35 | 1.7 | Documento de los Diagramas UML, diagramas E-R, Relacional, Documento con la maquetación, Documento del mapa de navegación | milestone | 0d | 2018-03-14 13:00 | 2018-03-14 13:00 | 34 | 26.62d |  |  |  |  |  |

| ID | WBS | Task | Duration | Start | Finish | Predecessors | Total slack | Free slack | Constraint | Resources | Work | Cost |
| --- | --- | --- | --- | --- | --- | --- | --- | --- | --- | --- | --- | --- |
| 36 | 1.8 | **Desarrollo** | 20.5d | 2018-03-14 13:00 | 2018-04-04 23:00 | 22 | 4.38d | 0d |  |  | 216h | 25,926 |
| 37 | 1.8.1 | Codificar la base de datos | 8h | 2018-03-14 13:00 | 2018-03-14 23:00 | 34 | 13.5d | 0d |  |  |  |  |
| 38 | 1.8.2 | **Modulos** | 16.5d | 2018-03-15 08:00 | 2018-04-03 10:00 |  | 5.25d |  |  |  | 120h | 14,400 |
| 39 | 1.8.2.1 | **Usuarios** | 3.75d | 2018-03-15 08:00 | 2018-03-17 12:00 |  | 13.5d |  |  |  | 30h | 3,600 |
| 40 | 1.8.2.1.1 | Interfaz | 6h | 2018-03-15 08:00 | 2018-03-15 14:00 | 37 | 13.5d | 0d |  | Jose Alfredo Armenta Blanco | 6h | 720 |
| 41 | 1.8.2.1.2 | Consulta | 6h | 2018-03-15 16:00 | 2018-03-15 22:00 | 40 | 13.5d | 0d |  | Jose Alfredo Armenta Blanco | 6h | 720 |
| 42 | 1.8.2.1.3 | Alta | 6h | 2018-03-15 22:00 | 2018-03-16 13:00 | 41 | 13.5d | 0d |  | Jose Alfredo Armenta Blanco | 6h | 720 |
| 43 | 1.8.2.1.4 | Baja | 6h | 2018-03-16 13:00 | 2018-03-16 21:00 | 42 | 13.5d | 0d |  | Jose Alfredo Armenta Blanco | 6h | 720 |
| 44 | 1.8.2.1.5 | Modificación | 6h | 2018-03-16 21:00 | 2018-03-17 12:00 | 43 | 13.5d | 0d |  | Jose Alfredo Armenta Blanco | 6h | 720 |
| 45 | 1.8.2.2 | **LogIn** | 1.5d | 2018-03-17 12:00 | 2018-03-19 11:00 |  | 13.5d |  |  |  | 12h | 1,440 |
| 46 | 1.8.2.2.1 | Interfaz | 6h | 2018-03-17 12:00 | 2018-03-17 20:00 | 44 | 13.5d | 0d |  | Jose Alfredo Armenta Blanco | 6h | 720 |
| 47 | 1.8.2.2.2 | Validación del usuario | 6h | 2018-03-17 20:00 | 2018-03-19 11:00 | 46 | 13.5d | 0d |  | Jose Alfredo Armenta Blanco | 6h | 720 |
| 48 | 1.8.2.3 | **Publicidad** | 4d | 2018-03-19 11:00 | 2018-03-21 19:00 |  |  |  |  |  | 18h | 2,160 |
| 49 | 1.8.2.3.1 | Interfaz | 6h | 2018-03-19 11:00 | 2018-03-19 19:00 | 47 | 13.5d | 0.88d |  | Manuel Velázquez Martínez | 6h | 720 |
| 50 | 1.8.2.3.2 | Consulta | 6h | 2018-03-20 11:00 | 2018-03-20 19:00 | 49 | 16.25d |  | finish no earlier than 2018-03-20 19:00 | Manuel Velázquez Martínez | 6h | 720 |
| 51 | 1.8.2.3.3 | Moficación | 6h | 2018-03-21 09:00 | 2018-03-21 17:00 |  | 0d |  | start no earlier than 2018-03-21 09:00 | Manuel Velázquez Martínez | 6h | 720 |
| 52 | 1.8.2.4 | **Comentarios** | 3.75d | 2018-03-21 17:00 | 2018-03-23 21:00 |  | 0d |  |  |  | 30h | 3,600 |
| 53 | 1.8.2.4.1 | Interfaz | 6h | 2018-03-21 17:00 | 2018-03-21 23:00 | 51 | 0d |  |  | Laura Patricia Rangel Mora | 6h | 720 |
| 54 | 1.8.2.4.2 | Consulta | 6h | 2018-03-22 08:00 | 2018-03-22 14:00 | 53 | 0d |  |  | Laura Patricia Rangel Mora | 6h | 720 |
| 55 | 1.8.2.4.3 | Alta | 6h | 2018-03-22 16:00 | 2018-03-22 22:00 | 54 | 0d |  |  | Laura Patricia Rangel Mora | 6h | 720 |
| 56 | 1.8.2.4.4 | Baja | 6h | 2018-03-22 22:00 | 2018-03-23 13:00 | 55 | 0d |  |  | Laura Patricia Rangel Mora | 6h | 720 |
| 57 | 1.8.2.4.5 | Modificación | 6h | 2018-03-23 13:00 | 2018-03-23 21:00 | 56 | 0d |  |  | Laura Patricia Rangel Mora | 6h | 720 |
| 58 | 1.8.2.5 | **FAQ** | 3.75d | 2018-03-23 21:00 | 2018-04-03 10:00 |  | 0d |  |  |  | 30h | 3,600 |
| 59 | 1.8.2.5.1 | Interfaz | 6h | 2018-03-23 21:00 | 2018-03-24 12:00 | 57 | 0d |  |  | Andres Moreno Garcia | 6h | 720 |
| 60 | 1.8.2.5.2 | Consulta | 6h | 2018-03-24 12:00 | 2018-03-24 20:00 | 59 | 0d |  |  | Andres Moreno Garcia | 6h | 720 |
| 61 | 1.8.2.5.3 | Alta | 6h | 2018-03-24 20:00 | 2018-04-02 11:00 | 60 | 0d |  |  | Andres Moreno Garcia | 6h | 720 |
| 62 | 1.8.2.5.4 | Baja | 6h | 2018-04-02 11:00 | 2018-04-02 19:00 | 61 | 0d |  |  | Andres Moreno Garcia | 6h | 720 |
| 63 | 1.8.2.5.5 | Modificación | 6h | 2018-04-02 19:00 | 2018-04-03 10:00 | 62 | 0d |  |  | Andres Moreno Garcia | 6h | 720 |

| ID | WBS | Task | Type | Duration | Start | Finish | Predecessors | Total slack | Constraint | Resources | Work | Cost |
| --- | --- | --- | --- | --- | --- | --- | --- | --- | --- | --- | --- | --- |
| 64 | 1.8.3 | **Pruebas** |  | 3d | 2018-04-03 10:00 | 2018-04-04 23:00 |  | 0d |  |  | 96h | 11,526 |
| 65 | 1.8.3.1 | Pruebas unitarias |  | 6h | 2018-04-03 10:00 | 2018-04-03 18:00 | 63 | 0d |  | Laura Patricia Rangel Mora; Andres Moreno Garcia; Manuel Velázquez Martínez; Jose Alfredo Armenta Blanco; Hojas [3 Unidad] | 24h | 2,881.5 |
| 66 | 1.8.3.2 | Pruebas de módulo |  | 6h | 2018-04-03 18:00 | 2018-04-04 09:00 | 65 | 0d |  | Laura Patricia Rangel Mora; Andres Moreno Garcia; Manuel Velázquez Martínez; Jose Alfredo Armenta Blanco; Hojas [3 Unidad] | 24h | 2,881.5 |
| 67 | 1.8.3.3 | Pruebas de sistema |  | 6h | 2018-04-04 09:00 | 2018-04-04 17:00 | 66 | 0d |  | Laura Patricia Rangel Mora; Andres Moreno Garcia; Manuel Velázquez Martínez; Jose Alfredo Armenta Blanco; Hojas [3 Unidad] | 24h | 2,881.5 |
| 68 | 1.8.3.4 | Pruebas de calidad |  | 6h | 2018-04-04 17:00 | 2018-04-04 23:00 | 67 | 0d |  | Laura Patricia Rangel Mora; Andres Moreno Garcia; Manuel Velázquez Martínez; Jose Alfredo Armenta Blanco; Hojas [3 Unidad] | 24h | 2,881.5 |
| 69 | 1.9 | Codigo de los modulos, Documento de las pruebas | milestone | 0d | 2018-04-04 23:00 | 2018-04-04 23:00 | 68 | 4.38d |  |  |  |  |
| 70 | 1.10 | **Implementación** |  | 5.88d | 2018-04-04 09:00 | 2018-04-07 19:00 | 36 |  |  |  | 56h | 6,720 |
| 71 | 1.10.1 | Selección de hosting |  | 2h | 2018-04-05 08:00 | 2018-04-05 10:00 | 68 | 0d |  | Jose Alfredo Armenta Blanco | 2h | 240 |
| 72 | 1.10.2 | Montar la aplicación |  | 4h | 2018-04-05 10:00 | 2018-04-05 14:00 | 71 | 0d |  | Manuel Velázquez Martínez | 4h | 480 |
| 73 | 1.10.3 | Pruebas de sistema |  | 6h | 2018-04-05 16:00 | 2018-04-05 22:00 | 72 | 0d |  | Andres Moreno Garcia | 6h | 720 |
| 74 | 1.10.4 | **Cierre del proyecto** |  | 2.88d | 2018-04-05 22:00 | 2018-04-07 19:00 |  |  |  |  | 44h | 5,280 |
| 75 | 1.10.4.1 | Revisión del sitio web |  | 2h | 2018-04-05 22:00 | 2018-04-06 09:00 | 73 | 0d | finish no earlier than 2018-04-05 19:00 | Laura Patricia Rangel Mora; Manuel Velázquez Martínez | 4h | 480 |
| 76 | 1.10.4.2 | Revisión de documentacion |  | 2h | 2018-04-06 09:00 | 2018-04-06 11:00 | 75 | 0d |  | Laura Patricia Rangel Mora; Manuel Velázquez Martínez | 4h | 480 |
| 77 | 1.10.4.3 | Revisión de recursos humanos |  | 2h | 2018-04-06 11:00 | 2018-04-06 13:00 | 76 | 0d |  | Laura Patricia Rangel Mora; Manuel Velázquez Martínez | 4h | 480 |
| 78 | 1.10.4.4 | Revisión de contratos |  | 2h | 2018-04-06 13:00 | 2018-04-06 17:00 | 77 | 0d |  | Laura Patricia Rangel Mora; Manuel Velázquez Martínez | 4h | 480 |
| 79 | 1.10.4.5 | Revisiones de documentos de evaluación de la calidad |  | 2h | 2018-04-06 17:00 | 2018-04-06 19:00 | 78 | 0d |  |  |  |  |
| 80 | 1.10.4.6 | Carta de aceptación |  | 2h | 2018-04-06 19:00 | 2018-04-06 21:00 | 79 | 0d |  | Andres Moreno Garcia; Jose Alfredo Armenta Blanco | 4h | 480 |
| 81 | 1.10.4.7 | Acta de cierre de proyecto |  | 2h | 2018-04-06 21:00 | 2018-04-06 23:00 | 80 | 0d |  | Andres Moreno Garcia; Jose Alfredo Armenta Blanco | 4h | 480 |
| 82 | 1.10.4.8 | Evaluación de desempeño |  | 1h | 2018-04-07 08:00 | 2018-04-07 09:00 | 81 | 0d |  | Andres Moreno Garcia; Jose Alfredo Armenta Blanco | 2h | 240 |
| 83 | 1.10.4.9 | Liberación de recursos |  | 1h | 2018-04-07 09:00 | 2018-04-07 10:00 | 82 | 0d |  | Andres Moreno Garcia; Jose Alfredo Armenta Blanco | 2h | 240 |
| 84 | 1.10.4.10 | Lecciones aprendidas |  | 2h | 2018-04-07 10:00 | 2018-04-07 12:00 | 83 | 0d |  | Andres Moreno Garcia; Jose Alfredo Armenta Blanco | 4h | 480 |
| 85 | 1.10.4.11 | Agradecimientos y felicitaciones |  | 1h | 2018-04-07 12:00 | 2018-04-07 13:00 | 84 | 0d |  | Andres Moreno Garcia; Jose Alfredo Armenta Blanco | 2h | 240 |
| 86 | 1.10.4.12 | Junta directiva para la entrega de documentación y presentación de proyecto |  | 2h | 2018-04-07 13:00 | 2018-04-07 17:00 | 85 | 0d |  | Jose Alfredo Armenta Blanco | 2h | 240 |
| 87 | 1.10.4.13 | Informe final (Cierre) |  | 2h | 2018-04-07 17:00 | 2018-04-07 19:00 | 86 | 0d |  | Laura Patricia Rangel Mora; Manuel Velázquez Martínez; Andres Moreno Garcia; Jose Alfredo Armenta Blanco | 8h | 960 |
| 88 | 1.11 | Acta de cierre de proyecto, Documento de las lecciones aprendidas, Informe final | milestone | 0d | 2018-04-07 19:00 | 2018-04-07 19:00 | 87 | 0d |  |  |  |  |
| 89 | 1.12 | Fin | milestone | 0d | 2018-04-07 19:00 | 2018-04-07 19:00 | 87 | 0d |  |  |  |  |
