# AVOINE Proyect

Schedule from MS Project, 2018-02-01 to 2018-04-07, costs in XDR.

## Calendars

- Estándar: Mon-Sat 08:00-14:00, 16:00-23:00; Sun off. Exceptions (off unless hours are given): 2018-03-26 to 2018-03-31 (Semana Santa).

## Resources

| Resource | Unit | Rate |
| --- | --- | --- |
| Manuel Velázquez Martínez (PROGRAMADOR) |  | 20 |
| Laura Patricia Rangel Mora (DISEÑADORA) |  | 31 |
| Jose Alfredo Armenta Blanco (LIDER DE PROYECTO) |  | 24 |
| Andres Moreno Garcia (PROGRAMADOR) |  | 20 |
| Hojas | Unidad | 0.5 |
| Lapicero | Unidad | 4 |
| Laptop |  | 5 |
| Agua |  | 0.11 |
| Electricidad |  | 0.08 |
| Internet |  | 0.54 |
| Mouse | Unidad | 65 |
| Memorias | Unidad | 80 |
| Manuel Velázquez Martínez (TESTER) |  | 47 |
| Andres Moreno Garcia (ARQUITECTO DE SISTEMAS) |  | 31 |
| Andres Moreno Garcia (DOCUMENTADOR) |  | 44 |
| Laura Patricia Rangel Mora (ANALISTA) |  |  |

## Schedule

| ID | WBS | Task | Type | Duration | Start | Finish | Predecessors | Total slack | Free slack | Constraint | Resources | Work | Cost |
| --- | --- | --- | --- | --- | --- | --- | --- | --- | --- | --- | --- | --- | --- |
| 1 | 1 | **AVOINE** |  | 82.25d | 2018-02-01 09:00 | 2018-04-07 19:00 |  |  |  |  | Memorias [4 Unidad]; Agua; Electricidad; Hojas [1 Unidad]; Mouse [1 Unidad]; Laptop | 2328h | 12,821.52 |
| 2 | 1.1 | Start | milestone | 0d | 2018-02-01 09:00 | 2018-02-01 09:00 |  | 82.25d |  |  |  |  |  |
| 3 | 1.2 | **Planning** |  | 9.12d | 2018-02-01 09:00 | 2018-02-07 19:00 |  | 2.38d |  |  |  | 28h | 928 |
| 4 | 1.2.1 | Meeting Minute |  | 1h | 2018-02-01 09:00 | 2018-02-01 10:00 |  | 10.25d | 0d | start no earlier than 2018-02-01 09:00 | Jose Alfredo Armenta Blanco (LIDER DE PROYECTO); Andres Moreno Garcia (DOCUMENTADOR) | 2h | 68 |
| 5 | 1.2.2 | Life Cycle |  | 1h | 2018-02-01 10:00 | 2018-02-01 11:00 | 4 | 10.25d | 7.88d | start no earlier than 2018-02-01 09:00 | Jose Alfredo Armenta Blanco (LIDER DE PROYECTO); Andres Moreno Garcia (DOCUMENTADOR) | 2h | 68 |
| 6 | 1.2.3 | Project Plan |  | 8h | 2018-02-07 09:00 | 2018-02-07 19:00 | 5 | 2.38d | 0d | start no earlier than 2018-02-07 09:00 | Laura Patricia Rangel Mora (DISEÑADORA); Andres Moreno Garcia (DOCUMENTADOR); Jose Alfredo Armenta Blanco (LIDER DE PROYECTO) | 24h | 792 |
| 7 | 1.3 | Release Meeting Minute Document, Project Plan Document | milestone | 0d | 2018-02-07 19:00 | 2018-02-07 19:00 | 6 | 73.12d |  |  |  |  |  |
| 8 | 1.4 | **Analysis** |  | 15.88d | 2018-02-10 09:00 | 2018-02-21 21:00 | 3 |  |  |  |  | 29h | 99 |
| 9 | 1.4.1 | Meeting Minute | manual | 1h | 2018-02-09 10:00 | 2018-02-09 11:00 | 6 |  |  |  | Jose Alfredo Armenta Blanco (LIDER DE PROYECTO); Andres Moreno Garcia (DOCUMENTADOR) | 2h | 68 |
| 10 | 1.4.2 | **Requirements Management.** |  | 4.25d | 2018-02-10 09:00 | 2018-02-13 19:00 |  |  |  |  |  | 11h | 31 |
| 11 | 1.4.2.1 | Evaluate the suppliers of requirements to interview. |  | 1h | 2018-02-10 09:00 | 2018-02-10 10:00 | 9 | 3.25d | 0d | start no earlier than 2018-02-10 09:00 | Laura Patricia Rangel Mora (ANALISTA); Andres Moreno Garcia (ARQUITECTO DE SISTEMAS) | 2h | 31 |
| 12 | 1.4.2.2 | Define the requirements collection strategy |  | 1h | 2018-02-10 10:00 | 2018-02-10 11:00 | 11 | 3.25d | 1.38d | start no earlier than 2018-02-10 09:00 | Laura Patricia Rangel Mora (ANALISTA) | 1h |  |
| 13 | 1.4.2.3 | Identify functional requirements |  | 4h | 2018-02-12 09:00 | 2018-02-12 13:00 | 12 | 1.88d | 0d | start no earlier than 2018-02-12 09:00 | Laura Patricia Rangel Mora (ANALISTA) | 4h |  |
| 14 | 1.4.2.4 | Identify non-functional requirements |  | 4h | 2018-02-12 13:00 | 2018-02-12 19:00 | 13 | 1.88d | 0d | start no earlier than 2018-02-09 09:00 | Laura Patricia Rangel Mora (ANALISTA) | 4h |  |
| 15 | 1.4.3 | **Management** |  | 4.38d | 2018-02-12 19:00 | 2018-02-15 13:00 |  | -0.5d | 0d |  |  | 16h |  |
| 16 | 1.4.3.1 | Prioritize the requirements |  | 4h | 2018-02-12 19:00 | 2018-02-12 23:00 | 14 | 1.88d | 0.12d | start no earlier than 2018-02-12 09:00 | Laura Patricia Rangel Mora (ANALISTA) | 4h |  |
| 17 | 1.4.3.2 | Assign the software requirements development group |  | 4h | 2018-02-13 09:00 | 2018-02-13 13:00 | 16 | 1.75d | 1.12d | start no earlier than 2018-02-13 09:00 | Laura Patricia Rangel Mora (ANALISTA) | 4h |  |
| 18 | 1.4.3.3 | Manage changes in requirements |  | 4h | 2018-02-14 09:00 | 2018-02-14 13:00 | 17 | 0.62d |  | start no earlier than 2018-02-14 09:00 | Laura Patricia Rangel Mora (ANALISTA) | 4h |  |
| 19 | 1.4.3.4 | Manage the traceability of the requirements |  | 4h | 2018-02-15 09:00 | 2018-02-15 13:00 | 18 | -0.5d | 0d | start no earlier than 2018-02-15 09:00 | Laura Patricia Rangel Mora (ANALISTA) | 4h |  |
| 20 | 1.5 | Requirements Management Document, Estrategy Requirements Management Document. | milestone | 0d | 2018-02-15 13:00 | 2018-02-15 13:00 | 19 | 62.25d |  |  |  |  |  |
| 21 | 1.6 | **Desing** |  | 33.5d | 2018-02-15 09:00 | 2018-03-10 19:00 | 8 | 0d |  |  |  | 148h | 4,594 |
| 22 | 1.6.1 | Meeting Minute | manual | 1h | 2018-02-15 13:00 | 2018-02-15 14:00 | 19 |  |  |  | Jose Alfredo Armenta Blanco (LIDER DE PROYECTO); Andres Moreno Garcia (DOCUMENTADOR) | 2h | 68 |
| 23 | 1.6.2 | **UML Diagrams** |  | 12.38d | 2018-02-15 09:00 | 2018-02-23 19:00 |  |  |  |  |  | 54h | 1,674 |
| 24 | 1.6.2.1 | Use Cases Diagrams |  | 18h | 2018-02-15 16:00 | 2018-02-16 21:00 | 22 | 14.62d | 0.38d | start no earlier than 2018-02-15 09:00 | Laura Patricia Rangel Mora (DISEÑADORA) | 18h | 558 |
| 25 | 1.6.2.2 | Sequence Diagrams |  | 18h | 2018-02-17 09:00 | 2018-02-19 14:00 | 24 | 14.25d | 0d | start no earlier than 2018-02-17 09:00 | Laura Patricia Rangel Mora (DISEÑADORA) | 18h | 558 |
| 26 | 1.6.2.3 | Class diagrams |  | 18h | 2018-02-19 16:00 | 2018-02-20 21:00 | 25 | 14.25d | 11.75d | start no earlier than 2018-02-19 09:00 | Laura Patricia Rangel Mora (DISEÑADORA) | 18h | 558 |
| 27 | 1.6.3 | E-R Diagram |  | 12h | 2018-03-01 09:00 | 2018-03-01 23:00 | 26 | 2.5d | 0.12d | start no earlier than 2018-03-01 09:00 | Laura Patricia Rangel Mora (DISEÑADORA) | 12h | 372 |
| 28 | 1.6.4 | Relational Diagram |  | 10h | 2018-03-02 09:00 | 2018-03-02 21:00 | 27 | 2.38d | 0.38d | start no earlier than 2018-03-02 09:00 | Laura Patricia Rangel Mora (DISEÑADORA) | 10h | 310 |
| 29 | 1.6.5 | Layout |  | 8h | 2018-03-03 09:00 | 2018-03-03 19:00 | 28 | 2d | 0.62d | start no earlier than 2018-03-03 09:00 | Laura Patricia Rangel Mora (DISEÑADORA) | 8h | 248 |
| 30 | 1.6.6 | Navigation map |  | 8h | 2018-03-05 09:00 | 2018-03-05 19:00 | 29 | 1.38d | 0d | start no earlier than 2018-03-05 09:00 | Laura Patricia Rangel Mora (DISEÑADORA) | 8h | 248 |
| 31 | 1.6.7 | Logo |  | 18h | 2018-03-05 19:00 | 2018-03-07 09:00 | 30 | 1.38d | 0d | start no earlier than 2018-03-05 09:00 | Laura Patricia Rangel Mora (DISEÑADORA) | 18h | 558 |
| 32 | 1.6.8 | Website Banner |  | 18h | 2018-03-07 09:00 | 2018-03-08 14:00 | 31 | 1.38d |  | start no earlier than 2018-03-07 09:00 | Laura Patricia Rangel Mora (DISEÑADORA) | 18h | 558 |
| 33 | 1.6.9 | Animations |  | 18h | 2018-03-09 12:00 | 2018-03-10 19:00 | 32 | 0d |  | finish no earlier than 2018-03-10 19:00 | Laura Patricia Rangel Mora (DISEÑADORA) | 18h | 558 |
| 34 | 1.7 | UML Diagrams Document, E-R Diagram, Relational Diagram , Loyaut, Navigation Map Document | milestone | 0d | 2018-03-10 19:00 | 2018-03-10 19:00 | 33 | 29.25d |  |  |  |  |  |

| ID | WBS | Task | Type | Duration | Start | Finish | Predecessors | Total slack | Free slack | Constraint | Resources | Work | Cost |
| --- | --- | --- | --- | --- | --- | --- | --- | --- | --- | --- | --- | --- | --- |
| 35 | 1.8 | **Development** |  | 25.75d | 2018-03-10 19:00 | 2018-04-05 17:00 | 21 | 0d |  |  |  | 142h | 3,192 |
| 36 | 1.8.1 | Meeting Minute | manual | 1h | 2018-03-10 19:00 | 2018-03-10 20:00 | 33 |  |  |  | Jose Alfredo Armenta Blanco (LIDER DE PROYECTO); Andres Moreno Garcia (DOCUMENTADOR) | 2h | 68 |
| 37 | 1.8.2 | Data Base Coding |  | 8h | 2018-03-10 20:00 | 2018-03-12 13:00 | 36 | 8.75d | 0d |  | Andres Moreno Garcia (PROGRAMADOR) | 8h | 160 |
| 38 | 1.8.3 | **Modules** |  | 20.75d | 2018-03-12 13:00 | 2018-04-03 10:00 |  | 3d |  |  |  | 120h | 2,400 |
| 39 | 1.8.3.1 | **Users** |  | 3.75d | 2018-03-12 13:00 | 2018-03-14 19:00 |  | 8.75d |  |  |  | 30h | 600 |
| 40 | 1.8.3.1.1 | Inteface |  | 6h | 2018-03-12 13:00 | 2018-03-12 21:00 | 37 | 8.75d | 0d |  | Manuel Velázquez Martínez (PROGRAMADOR) | 6h | 120 |
| 41 | 1.8.3.1.2 | List |  | 6h | 2018-03-12 21:00 | 2018-03-13 12:00 | 40 | 8.75d | 0d |  | Manuel Velázquez Martínez (PROGRAMADOR) | 6h | 120 |
| 42 | 1.8.3.1.3 | Register |  | 6h | 2018-03-13 12:00 | 2018-03-13 20:00 | 41 | 8.75d | 0d |  | Manuel Velázquez Martínez (PROGRAMADOR) | 6h | 120 |
| 43 | 1.8.3.1.4 | Delete |  | 6h | 2018-03-13 20:00 | 2018-03-14 11:00 | 42 | 8.75d | 0d |  | Manuel Velázquez Martínez (PROGRAMADOR) | 6h | 120 |
| 44 | 1.8.3.1.5 | Update |  | 6h | 2018-03-14 11:00 | 2018-03-14 19:00 | 43 | 8.75d | 0d |  | Manuel Velázquez Martínez (PROGRAMADOR) | 6h | 120 |
| 45 | 1.8.3.2 | **LogIn** |  | 1.5d | 2018-03-14 19:00 | 2018-03-15 18:00 |  | 8.75d |  |  |  | 12h | 240 |
| 46 | 1.8.3.2.1 | Interface |  | 6h | 2018-03-14 19:00 | 2018-03-15 10:00 | 44 | 8.75d | 0d |  | Manuel Velázquez Martínez (PROGRAMADOR) | 6h | 120 |
| 47 | 1.8.3.2.2 | User validation |  | 6h | 2018-03-15 10:00 | 2018-03-15 18:00 | 46 | 8.75d | 4.25d |  | Manuel Velázquez Martínez (PROGRAMADOR) | 6h | 120 |
| 48 | 1.8.3.3 | **Publicity** |  | 4d | 2018-03-19 11:00 | 2018-03-21 19:00 |  |  |  |  |  | 18h | 360 |
| 49 | 1.8.3.3.1 | Interface |  | 6h | 2018-03-19 11:00 | 2018-03-19 19:00 | 47 | 4.5d | 0.88d |  | Manuel Velázquez Martínez (PROGRAMADOR) | 6h | 120 |
| 50 | 1.8.3.3.2 | List |  | 6h | 2018-03-20 11:00 | 2018-03-20 19:00 | 49 | 3.62d | 0.62d | finish no earlier than 2018-03-20 19:00 | Manuel Velázquez Martínez (PROGRAMADOR) | 6h | 120 |
| 51 | 1.8.3.3.3 | Update |  | 6h | 2018-03-21 09:00 | 2018-03-21 17:00 | 50 | 3d | 0d | start no earlier than 2018-03-21 09:00 | Manuel Velázquez Martínez (PROGRAMADOR) | 6h | 120 |
| 52 | 1.8.3.4 | **Comments** |  | 3.75d | 2018-03-21 17:00 | 2018-03-23 21:00 |  | 3d |  |  |  | 30h | 600 |
| 53 | 1.8.3.4.1 | Interface |  | 6h | 2018-03-21 17:00 | 2018-03-21 23:00 | 51 | 3d | 0d |  | Andres Moreno Garcia (PROGRAMADOR) | 6h | 120 |
| 54 | 1.8.3.4.2 | List |  | 6h | 2018-03-22 08:00 | 2018-03-22 14:00 | 53 | 3d | 0d |  | Andres Moreno Garcia (PROGRAMADOR) | 6h | 120 |
| 55 | 1.8.3.4.3 | Register |  | 6h | 2018-03-22 16:00 | 2018-03-22 22:00 | 54 | 3d | 0d |  | Andres Moreno Garcia (PROGRAMADOR) | 6h | 120 |
| 56 | 1.8.3.4.4 | Delete |  | 6h | 2018-03-22 22:00 | 2018-03-23 13:00 | 55 | 3d | 0d |  | Andres Moreno Garcia (PROGRAMADOR) | 6h | 120 |
| 57 | 1.8.3.4.5 | Update |  | 6h | 2018-03-23 13:00 | 2018-03-23 21:00 | 56 | 3d | 0d |  | Andres Moreno Garcia (PROGRAMADOR) | 6h | 120 |
| 58 | 1.8.3.5 | **FAQ** |  | 3.75d | 2018-03-23 21:00 | 2018-04-03 10:00 |  | 3d |  |  |  | 30h | 600 |
| 59 | 1.8.3.5.1 | Interface |  | 6h | 2018-03-23 21:00 | 2018-03-24 12:00 | 57 | 3d | 0d |  | Andres Moreno Garcia (PROGRAMADOR) | 6h | 120 |
| 60 | 1.8.3.5.2 | List |  | 6h | 2018-03-24 12:00 | 2018-03-24 20:00 | 59 | 3d | 0d |  | Andres Moreno Garcia (PROGRAMADOR) | 6h | 120 |
| 61 | 1.8.3.5.3 | Register |  | 6h | 2018-03-24 20:00 | 2018-04-02 11:00 | 60 | 3d | 0d |  | Andres Moreno Garcia (PROGRAMADOR) | 6h | 120 |
| 62 | 1.8.3.5.4 | Delete |  | 6h | 2018-04-02 11:00 | 2018-04-02 19:00 | 61 | 3d | 0d |  | Andres Moreno Garcia (PROGRAMADOR) | 6h | 120 |
| 63 | 1.8.3.5.5 | Update |  | 6h | 2018-04-02 19:00 | 2018-04-03 10:00 | 62 | 3d | 0d |  | Andres Moreno Garcia (PROGRAMADOR) | 6h | 120 |
| 64 | 1.8.4 | Meeting Minute | manual | 1h | 2018-04-03 10:00 | 2018-04-03 11:00 | 63 |  |  |  |  |  |  |

| ID | WBS | Task | Type | Duration | Start | Finish | Predecessors | Total slack | Free slack | Constraint | Resources | Work | Cost |
| --- | --- | --- | --- | --- | --- | --- | --- | --- | --- | --- | --- | --- | --- |
| 65 | 1.8.5 | **Tests** |  | 2.38d | 2018-04-04 09:00 | 2018-04-05 17:00 |  |  |  |  |  | 12h | 564 |
| 66 | 1.8.5.1 | Module Tests |  | 6h | 2018-04-04 09:00 | 2018-04-04 17:00 | 64 | 1.62d | 0.88d |  | Manuel Velázquez Martínez (TESTER) | 6h | 282 |
| 67 | 1.8.5.2 | System Tests |  | 6h | 2018-04-05 09:00 | 2018-04-05 17:00 | 66 | 2.88d | 0d | start no earlier than 2018-04-05 09:00 | Manuel Velázquez Martínez (TESTER) | 6h | 282 |
| 68 | 1.9 | Website code | milestone | 0d | 2018-04-05 17:00 | 2018-04-05 17:00 | 67 | 3.5d |  | start no earlier than 2018-04-04 09:00 |  |  |  |
| 69 | 1.10 | **End of the project** |  | 4.25d | 2018-04-05 09:00 | 2018-04-07 19:00 | 35 |  |  |  |  | 7h | 208 |
| 70 | 1.10.1 | Letter of Acceptance | manual | 1h | 2018-04-05 17:00 | 2018-04-05 18:00 | 67 |  |  |  | Jose Alfredo Armenta Blanco (LIDER DE PROYECTO); Andres Moreno Garcia (DOCUMENTADOR) | 2h | 68 |
| 71 | 1.10.2 | Project closure | manual | 1h | 2018-04-05 18:00 | 2018-04-05 19:00 | 70 |  |  |  | Jose Alfredo Armenta Blanco (LIDER DE PROYECTO); Andres Moreno Garcia (DOCUMENTADOR) | 2h | 68 |
| 72 | 1.10.3 | Delivery of documentation and presentation | manual | 3h | 2018-04-05 19:00 | 2018-04-05 22:00 | 71 |  |  |  | Jose Alfredo Armenta Blanco (LIDER DE PROYECTO) | 3h | 72 |
| 73 | 1.11 | Letter of Acceptance, Final report | milestone | 0d | 2018-04-07 09:00 | 2018-04-07 09:00 | 72 | 1d |  | start no earlier than 2018-04-07 09:00 |  |  |  |
| 74 | 1.12 | End of the project | milestone | 0d | 2018-04-07 09:00 | 2018-04-07 09:00 | 72 | 1d |  | start no earlier than 2018-04-07 09:00 |  |  |  |
